# Opracowanie strony internetowej

Schedule from MS Project, 2024-03-25 to 2024-08-15, status date 2024-05-06, 5 hours a day, costs in zł.

## Calendars

- Standardowy: Mon-Fri 09:00-13:00, 14:00-18:00; Sat-Sun off.

## Resources

| Resource | Rate |
| --- | --- |
| Programista | 80 |
| Kierownik Projektu | 100 |
| Administrator Baz Danych | 100 |
| Tester Oprogramowania | 120 |
| Specjalista ds. Zapewnienia Jakości | 80 |

## Schedule

| ID | WBS | Task | Type | Duration | Start | Finish | Predecessors | Total slack | Free slack | Resources | Work | Cost |
| --- | --- | --- | --- | --- | --- | --- | --- | --- | --- | --- | --- | --- |
| 1 | 1 | **Iteracja 1 - Definicja wymagań** |  | 9d | 2024-03-25 | 2024-04-01 |  | 0.4d | 0d | Kierownik Projektu; Administrator Baz Danych; Programista; Tester Oprogramowania | 520h | 51,800 |
| 2 | 1.1 | **Raporty** |  | 9d | 2024-03-25 | 2024-04-01 |  | 0.4d | 0d | Kierownik Projektu | 340h | 33,800 |
| 3 | 1.1.1 | **Specyfikacje funkcjonalne** |  | 9d | 2024-03-25 | 2024-04-01 |  | 0.4d |  | Kierownik Projektu; Administrator Baz Danych; Programista; Tester Oprogramowania | 295h | 29,300 |
| 4 | 1.1.1.1 | **Zbierz wymagania użytkownika** |  | 1d | 2024-03-25 | 2024-03-25 |  | 0.4d | 0d | Kierownik Projektu; Administrator Baz Danych; Programista | 45h | 4,300 |
| 5 | 1.1.1.1.1 | Zdefiniuj elementy danych |  | 1d | 2024-03-25 | 2024-03-25 |  | 0.4d | 0d | Kierownik Projektu; Administrator Baz Danych | 10h | 1,000 |
| 6 | 1.1.1.1.2 | Zdefiniuj częstotliwość wywoływania strony |  | 1d | 2024-03-25 | 2024-03-25 | 5SS | 0.4d | 0d | Kierownik Projektu; Administrator Baz Danych; Programista | 15h | 1,400 |
| 7 | 1.1.1.1.3 | Zdefiniuj odbiorców |  | 1d | 2024-03-25 | 2024-03-25 | 6SS | 0.4d |  | Kierownik Projektu | 5h | 500 |
| 8 | 1.1.1.2 | Raporty z wykonanych projektów |  | 1d | 2024-03-25 | 2024-03-26 | 4 | 0.4d | 0d | Kierownik Projektu | 5h | 500 |
| 9 | 1.1.1.3 | Zdefiniuj raport z zespołem projektowym |  | 2d | 2024-03-26 | 2024-03-27 | 8 | 0.4d | 0d | Kierownik Projektu; Administrator Baz Danych; Programista; Tester Oprogramowania | 40h | 4,000 |
| 10 | 1.1.1.4 | Dostarcz ostateczne specyfikacje funkcjonalne |  | 2d | 2024-03-27 | 2024-03-28 | 9 | 0.4d | 0d | Kierownik Projektu | 10h | 1,000 |
| 11 | 1.1.1.5 | Uzyskaj akceptację użytkownika |  | 3d | 2024-03-28 | 2024-04-01 | 10 | 0.4d |  | Kierownik Projektu | 15h | 1,500 |
| 12 | 1.2 | Ustalone specyfikacje funkcjonalne | milestone, manual | 0d | 2024-04-01 | 2024-04-01 | 2 |  |  |  |  |  |
| 15 | 2 | **Iteracja 2 - Baza danych** |  | 27.4d | 2024-04-01 | 2024-04-24 | 1 | 0.4d | 0d | Administrator Baz Danych; Kierownik Projektu; Programista; Tester Oprogramowania; Specjalista ds. Zapewnienia Jakości | 2416h | 237,940 |
| 16 | 2.1 | **Projektowanie** |  | 11d | 2024-04-01 | 2024-04-10 |  | 0.4d | 0d | Administrator Baz Danych; Kierownik Projektu; Programista; Tester Oprogramowania | 1400h | 140,000 |
| 17 | 2.1.1 | **Interfejs użytkownika internetowego** |  | 11d | 2024-04-01 | 2024-04-10 |  | 0.4d |  | Administrator Baz Danych; Kierownik Projektu; Programista; Tester Oprogramowania | 590h | 59,000 |
| 18 | 2.1.1.1 | **Specyfikacja techniczna** |  | 11d | 2024-04-01 | 2024-04-10 |  | 0.4d |  | Administrator Baz Danych; Kierownik Projektu; Programista; Tester Oprogramowania | 370h | 37,000 |
| 19 | 2.1.1.1.1 | Opracuj specyfikacje techniczne |  | 5d | 2024-04-01 | 2024-04-04 |  | 0.4d | 0d | Administrator Baz Danych; Kierownik Projektu | 50h | 5,000 |
| 20 | 2.1.1.1.2 | Zapoznaj się z specyfikacjami technicznymi z zespołem projektowym |  | 4d | 2024-04-04 | 2024-04-09 | 19 | 0.4d | 0d | Administrator Baz Danych; Kierownik Projektu; Programista; Tester Oprogramowania | 80h | 8,000 |
| 21 | 2.1.1.1.3 | Uzyskaj akceptację zespołu |  | 2d | 2024-04-09 | 2024-04-10 | 20 | 0.4d | 0d | Administrator Baz Danych; Kierownik Projektu | 20h | 2,000 |
| 22 | 2.1.2 | **Baza danych SQL** |  | 11d | 2024-04-01 | 2024-04-10 |  | 0.4d |  | Administrator Baz Danych; Kierownik Projektu; Programista; Tester Oprogramowania | 590h | 59,000 |
| 23 | 2.1.2.1 | **Specyfikacja techniczna** |  | 11d | 2024-04-01 | 2024-04-10 |  | 0.4d |  | Administrator Baz Danych; Kierownik Projektu; Programista; Tester Oprogramowania | 370h | 37,000 |
| 24 | 2.1.2.1.1 | Opracuj specyfikacje techniczne |  | 5d | 2024-04-01 | 2024-04-04 | 19SS | 0.4d | 0d | Administrator Baz Danych; Kierownik Projektu | 50h | 5,000 |
| 25 | 2.1.2.1.2 | Zapoznaj się z specyfikacjami technicznymi z zespołem projektowym |  | 4d | 2024-04-04 | 2024-04-09 | 24 | 0.4d | 0d | Administrator Baz Danych; Kierownik Projektu; Programista; Tester Oprogramowania | 80h | 8,000 |
| 26 | 2.1.2.1.3 | Uzyskaj akceptację zespołu |  | 2d | 2024-04-09 | 2024-04-10 | 21FF, 25 | 0.4d |  | Administrator Baz Danych; Kierownik Projektu | 20h | 2,000 |

| ID | WBS | Task | Type | Duration | Start | Finish | Predecessors | Total slack | Free slack | Resources | Work | Cost |
| --- | --- | --- | --- | --- | --- | --- | --- | --- | --- | --- | --- | --- |
| 27 | 2.2 | **Implementacja** |  | 6d | 2024-04-10 | 2024-04-16 | 16 | 0.4d | 0d | Administrator Baz Danych; Kierownik Projektu; Programista; Tester Oprogramowania; Specjalista ds. Zapewnienia Jakości | 300h | 29,700 |
| 28 | 2.2.1 | **Baza danych SQL** |  | 6d | 2024-04-10 | 2024-04-16 |  | 0.4d |  | Administrator Baz Danych; Kierownik Projektu; Programista; Tester Oprogramowania | 165h | 16,500 |
| 29 | 2.2.1.1 | Identyfikuj relacje |  | 2d | 2024-04-10 | 2024-04-11 |  | 0.4d | 0d | Administrator Baz Danych | 10h | 1,000 |
| 30 | 2.2.1.2 | Tworzenie tabel bazy danych |  | 2d | 2024-04-11 | 2024-04-12 | 29 | 0.4d | 0d | Administrator Baz Danych | 10h | 1,000 |
| 31 | 2.2.1.3 | Przegląd tabel z zespołem projektowym |  | 1d | 2024-04-15 | 2024-04-15 | 30 | 0.4d | 0d | Administrator Baz Danych; Kierownik Projektu; Programista; Tester Oprogramowania | 20h | 2,000 |
| 32 | 2.2.1.4 | Uzyskaj akceptację zespołu |  | 1d | 2024-04-15 | 2024-04-16 | 31 | 0.4d |  | Administrator Baz Danych | 5h | 500 |
| 33 | 2.3 | **Zapewnienie jakości** |  | 5.6d | 2024-04-16 | 2024-04-19 | 27 | 0.4d |  | Specjalista ds. Zapewnienia Jakości | 60h | 4,800 |
| 34 | 2.3.1 | **Baza danych SQL** |  | 5.6d | 2024-04-16 | 2024-04-19 |  | 0.4d |  | Specjalista ds. Zapewnienia Jakości | 40h | 3,200 |
| 35 | 2.3.1.1 | Weryfikuj elementy projektu / danych |  | 2d | 2024-04-16 | 2024-04-17 |  | 0.4d |  | Specjalista ds. Zapewnienia Jakości | 10h | 800 |
| 36 | 2.3.1.2 | Zweryfikuj relacje |  | 2d | 2024-04-18 | 2024-04-19 | 35 | 0.4d |  | Specjalista ds. Zapewnienia Jakości | 10h | 800 |
| 37 | 2.4 | **Raporty** |  | 4d | 2024-04-22 | 2024-04-24 |  | 0.4d | 0d | Specjalista ds. Zapewnienia Jakości | 24h | 1,920 |
| 38 | 2.4.1 | Sprawdź projekt i funkcjonalność |  | 3d | 2024-04-22 | 2024-04-24 | 36 | 0.4d |  | Specjalista ds. Zapewnienia Jakości | 15h | 1,200 |
| 39 | 2.5 | Wytworzenie bazy danych | milestone, manual | 0d | 2024-04-24 | 2024-04-24 | 37 |  |  |  |  |  |
| 42 | 3 | **Iteracja 3 - Komunikacja między modułami** |  | 38.4d | 2024-04-24 | 2024-05-28 | 15 | 0d |  | Administrator Baz Danych; Kierownik Projektu; Programista; Specjalista ds. Zapewnienia Jakości; Tester Oprogramowania | 1944h | 186,700 |
| 43 | 3.1 | **Projektowanie** |  | 10.6d | 2024-04-24 | 2024-05-03 |  | 0.4d | 0d | Kierownik Projektu; Programista; Administrator Baz Danych; Tester Oprogramowania | 584h | 57,180 |
| 44 | 3.1.1 | **Interfejsy podsystemów** |  | 10.6d | 2024-04-24 | 2024-05-03 |  | 0.4d |  | Kierownik Projektu; Programista; Administrator Baz Danych; Tester Oprogramowania | 372h | 35,980 |
| 45 | 3.1.1.1 | **Określ elementy importu / eksportu danych** |  | 3d | 2024-04-24 | 2024-04-26 |  | 1.2d | 0d | Administrator Baz Danych; Kierownik Projektu; Programista; Tester Oprogramowania | 105h | 9,900 |
| 46 | 3.1.1.1.1 | Zdefiniuj potrzeby użytkownika |  | 3d | 2024-04-24 | 2024-04-26 |  | 1.2d | 0d | Kierownik Projektu; Programista | 30h | 2,700 |
| 47 | 3.1.1.1.2 | Zdefiniuj potrzeby informatyczne |  | 3d | 2024-04-24 | 2024-04-26 | 46SS | 1.2d |  | Programista | 15h | 1,200 |
| 48 | 3.1.1.2 | Interfejsy projektowe |  | 5d | 2024-04-26 | 2024-05-01 | 45 | 1.2d | 0d | Programista | 25h | 2,000 |
| 49 | 3.1.1.3 | Uzyskaj akceptację zespołu |  | 2d | 2024-05-01 | 2024-05-03 | 48 | 0.4d |  | Administrator Baz Danych; Programista; Specjalista ds. Zapewnienia Jakości; Tester Oprogramowania | 30h | 2,880 |
| 50 | 3.2 | **Implementacja** |  | 17d | 2024-05-03 | 2024-05-17 | 43 | 0.4d |  | Programista; Administrator Baz Danych; Kierownik Projektu; Tester Oprogramowania; Specjalista ds. Zapewnienia Jakości | 918h | 89,040 |
| 51 | 3.2.1 | **Interfejsy międzymodułowe** |  | 17d | 2024-05-03 | 2024-05-17 |  | 0.4d |  | Programista; Administrator Baz Danych; Kierownik Projektu; Tester Oprogramowania; Specjalista ds. Zapewnienia Jakości | 524h | 50,720 |
| 52 | 3.2.1.1 | Zbuduj interfejsy |  | 10d | 2024-05-03 | 2024-05-13 |  | 0.4d | 0d | Programista | 50h | 4,000 |
| 53 | 3.2.1.2 | Przeprowadź test jednostkowy funkcji importu / eksportu |  | 4d | 2024-05-13 | 2024-05-16 | 52 | 0.4d | 0d | Tester Oprogramowania | 20h | 2,400 |
| 54 | 3.2.1.3 | Uzyskaj akceptację zespołu |  | 3d | 2024-05-16 | 2024-05-17 | 53 | 0.4d |  | Administrator Baz Danych; Kierownik Projektu; Programista; Tester Oprogramowania | 60h | 6,000 |

| ID | WBS | Task | Type | Duration | Start | Finish | Predecessors | Total slack | Free slack | Resources | Work | Cost |
| --- | --- | --- | --- | --- | --- | --- | --- | --- | --- | --- | --- | --- |
| 55 | 3.3 | **Zapewnienie jakości** |  | 10.4d | 2024-05-20 | 2024-05-28 | 50 | 0d |  | Specjalista ds. Zapewnienia Jakości | 90h | 7,200 |
| 56 | 3.3.1 | **Interfejsy** |  | 4d | 2024-05-20 | 2024-05-22 |  | 0d |  | Specjalista ds. Zapewnienia Jakości | 30h | 2,400 |
| 57 | 3.3.1.1 | Sprawdź projekt i funkcjonalność |  | 3d | 2024-05-20 | 2024-05-22 |  | 0d |  | Specjalista ds. Zapewnienia Jakości | 15h | 1,200 |
| 58 | 3.3.2 | **Raporty** |  | 4d | 2024-05-24 | 2024-05-28 | 56 | 0d |  | Specjalista ds. Zapewnienia Jakości | 30h | 2,400 |
| 59 | 3.3.2.1 | Sprawdź projekt i funkcjonalność |  | 3d | 2024-05-24 | 2024-05-28 |  | 0d |  | Specjalista ds. Zapewnienia Jakości | 15h | 1,200 |
| 60 | 3.4 | Wytworzenie interfejsów międzymodułowych | milestone, manual | 0d | 2024-05-28 | 2024-05-28 | 55 |  |  |  |  |  |
| 63 | 4 | **Iteracja 4 - Interfejs użytkownika** |  | 47.4d | 2024-05-28 | 2024-07-09 | 42 | 0d |  | Administrator Baz Danych; Kierownik Projektu; Programista; Specjalista ds. Zapewnienia Jakości; Tester Oprogramowania | 2622h | 257,080 |
| 64 | 4.1 | **Projektowanie** |  | 12d | 2024-05-28 | 2024-06-07 |  | 0.4d | 0d | Administrator Baz Danych; Kierownik Projektu; Programista; Tester Oprogramowania | 875h | 87,100 |
| 65 | 4.1.1 | **Interfejs użytkownika internetowego** |  | 12d | 2024-05-28 | 2024-06-07 |  | 0.4d |  | Administrator Baz Danych; Kierownik Projektu; Programista; Tester Oprogramowania | 635h | 63,100 |
| 66 | 4.1.1.1 | **Specyfikacje funkcjonalne** |  | 12d | 2024-05-28 | 2024-06-07 |  | 0.4d |  | Administrator Baz Danych; Kierownik Projektu; Programista; Tester Oprogramowania | 395h | 39,100 |
| 67 | 4.1.1.1.1 | Utwórz makiety interfejsu użytkownika |  | 4d | 2024-05-28 | 2024-05-31 |  | 0.4d | 0d | Kierownik Projektu; Programista | 40h | 3,600 |
| 68 | 4.1.1.1.2 | Przeprowadź przegląd projektu |  | 3d | 2024-05-31 | 2024-06-04 | 67 | 0.4d | 0d | Administrator Baz Danych; Kierownik Projektu; Programista; Tester Oprogramowania | 60h | 6,000 |
| 69 | 4.1.1.1.3 | Dostarcz ostateczne specyfikacje funkcjonalne |  | 2d | 2024-06-04 | 2024-06-05 | 68 | 0.4d | 0d | Kierownik Projektu; Programista; Administrator Baz Danych; Tester Oprogramowania | 40h | 4,000 |
| 70 | 4.1.1.1.4 | Uzyskaj akceptację użytkownika |  | 3d | 2024-06-05 | 2024-06-07 | 69 | 0.4d |  | Kierownik Projektu | 15h | 1,500 |
| 71 | 4.2 | **Implementacja** |  | 22d | 2024-06-07 | 2024-06-26 | 64 | 0.4d |  | Programista; Administrator Baz Danych; Kierownik Projektu; Tester Oprogramowania | 1085h | 107,700 |
| 72 | 4.2.1 | **Interfejs WWW** |  | 22d | 2024-06-07 | 2024-06-26 |  | 0.4d |  | Programista; Administrator Baz Danych; Kierownik Projektu; Tester Oprogramowania | 645h | 63,700 |
| 73 | 4.2.1.1 | Kodowanie strony internetowej |  | 15d | 2024-06-07 | 2024-06-20 |  | 0.4d | 0d | Programista | 75h | 6,000 |
| 74 | 4.2.1.2 | Przeprowadzenie testów jednostkowych |  | 7d | 2024-06-14 | 2024-06-20 | 73FF | 0.4d | 0d | Tester Oprogramowania | 35h | 4,200 |
| 75 | 4.2.1.3 | Przejrzenie projektu / funkcjonalności strony internetowej |  | 4d | 2024-06-20 | 2024-06-25 | 74 | 0.4d | 0d | Administrator Baz Danych; Kierownik Projektu; Programista; Tester Oprogramowania | 80h | 8,000 |
| 76 | 4.2.1.4 | Uzyskaj akceptację użytkownika |  | 3d | 2024-06-25 | 2024-06-26 | 75 | 0.4d |  | Kierownik Projektu | 15h | 1,500 |
| 77 | 4.3 | **Zapewnienie jakości** |  | 13d | 2024-06-27 | 2024-07-09 | 71 | 0d |  | Specjalista ds. Zapewnienia Jakości; Tester Oprogramowania | 196h | 18,600 |
| 78 | 4.3.1 | **Interfejs WWW** |  | 8.2d | 2024-06-27 | 2024-07-04 |  | 0d |  | Specjalista ds. Zapewnienia Jakości; Tester Oprogramowania | 101h | 10,040 |
| 79 | 4.3.1.1 | Sprawdź projekt i funkcjonalność |  | 4d | 2024-06-27 | 2024-07-02 |  | 0d |  | Specjalista ds. Zapewnienia Jakości | 20h | 1,600 |
| 80 | 4.3.1.2 | Przeprowadzenie testów jednostkowych |  | 2d | 2024-07-02 | 2024-07-04 | 79 | 0d |  | Specjalista ds. Zapewnienia Jakości; Tester Oprogramowania | 14h | 1,440 |

| ID | WBS | Task | Type | Duration | Start | Finish | Predecessors | Total slack | Free slack | Resources | Work | Cost |
| --- | --- | --- | --- | --- | --- | --- | --- | --- | --- | --- | --- | --- |
| 81 | 4.3.2 | **Raporty** |  | 4.8d | 2024-07-04 | 2024-07-09 | 78 | 0d |  | Specjalista ds. Zapewnienia Jakości | 30h | 2,400 |
| 82 | 4.3.2.1 | Sprawdź projekt i funkcjonalność |  | 3d | 2024-07-04 | 2024-07-09 |  | 0d |  | Specjalista ds. Zapewnienia Jakości | 15h | 1,200 |
| 83 | 4.4 | Wytworzenie interfejsu użytkownika | milestone, manual | 0d | 2024-07-09 | 2024-07-09 | 77 |  |  |  |  |  |
| 86 | 5 | **Iteracja 5 - Integracja modułów** |  | 19.4d | 2024-07-09 | 2024-07-25 | 63 | 0d |  | Administrator Baz Danych; Programista; Specjalista ds. Zapewnienia Jakości; Tester Oprogramowania | 756h | 71,560 |
| 87 | 5.1 | **Zapewnienie jakości** |  | 6d | 2024-07-09 | 2024-07-15 |  | 0d |  | Specjalista ds. Zapewnienia Jakości; Tester Oprogramowania | 218h | 22,120 |
| 88 | 5.1.1 | **Interfejs WWW** |  | 3.4d | 2024-07-09 | 2024-07-11 |  | 2d | 0d | Specjalista ds. Zapewnienia Jakości; Tester Oprogramowania | 47h | 4,760 |
| 89 | 5.1.1.1 | Wykonaj test integracji |  | 3d | 2024-07-09 | 2024-07-11 |  | 2d |  | Specjalista ds. Zapewnienia Jakości; Tester Oprogramowania | 19h | 1,840 |
| 90 | 5.1.2 | **Baza danych SQL** |  | 3.4d | 2024-07-09 | 2024-07-11 | 88SS | 2d | 0d | Specjalista ds. Zapewnienia Jakości; Tester Oprogramowania | 47h | 4,760 |
| 91 | 5.1.2.1 | Wykonaj test integracji |  | 3d | 2024-07-09 | 2024-07-11 |  | 2d |  | Specjalista ds. Zapewnienia Jakości; Tester Oprogramowania | 19h | 1,840 |
| 92 | 5.1.3 | **Interfejsy** |  | 3.4d | 2024-07-09 | 2024-07-11 | 90SS | 0d |  | Specjalista ds. Zapewnienia Jakości; Tester Oprogramowania | 47h | 4,760 |
| 93 | 5.1.3.1 | Wykonaj test integracji |  | 3d | 2024-07-09 | 2024-07-11 |  | 0d |  | Specjalista ds. Zapewnienia Jakości; Tester Oprogramowania | 19h | 1,840 |
| 94 | 5.1.4 | **Raporty** |  | 2.6d | 2024-07-11 | 2024-07-15 | 92 | 0d |  | Specjalista ds. Zapewnienia Jakości; Tester Oprogramowania | 42h | 4,400 |
| 95 | 5.1.4.1 | Raportuj test integracji |  | 3d | 2024-07-11 | 2024-07-15 |  | 0d |  | Specjalista ds. Zapewnienia Jakości; Tester Oprogramowania | 21h | 2,200 |
| 96 | 5.2 | **Implementacja** |  | 8d | 2024-07-15 | 2024-07-22 | 87 | 0d |  | Programista; Administrator Baz Danych | 160h | 14,400 |
| 97 | 5.2.1 | Wprowadzenie poprawek na podstawie wyników testów integracyjnych |  | 8d | 2024-07-15 | 2024-07-22 |  | 0d |  | Programista; Administrator Baz Danych | 80h | 7,200 |
| 98 | 5.3 | **Zapewnienie jakości** |  | 5.4d | 2024-07-22 | 2024-07-25 | 96 | 0d |  | Specjalista ds. Zapewnienia Jakości; Tester Oprogramowania | 221h | 20,560 |
| 99 | 5.3.1 | **Interfejs WWW** |  | 5.4d | 2024-07-22 | 2024-07-25 |  | 0d |  | Specjalista ds. Zapewnienia Jakości; Tester Oprogramowania | 49h | 4,560 |
| 100 | 5.3.1.1 | Wykonaj test akceptacji użytkownika |  | 5.4d | 2024-07-22 | 2024-07-25 |  | 0d |  | Specjalista ds. Zapewnienia Jakości; Tester Oprogramowania | 24h | 2,240 |
| 101 | 5.3.2 | **Baza danych SQL** |  | 5.4d | 2024-07-22 | 2024-07-25 | 99SS | 0d |  | Specjalista ds. Zapewnienia Jakości; Tester Oprogramowania | 49h | 4,560 |
| 102 | 5.3.2.1 | Wykonaj test akceptacji użytkownika |  | 5.4d | 2024-07-22 | 2024-07-25 |  | 0d |  | Specjalista ds. Zapewnienia Jakości; Tester Oprogramowania | 24h | 2,240 |
| 103 | 5.3.3 | **Interfejsy** |  | 5.4d | 2024-07-22 | 2024-07-25 | 101SS | 0d |  | Specjalista ds. Zapewnienia Jakości; Tester Oprogramowania | 49h | 4,560 |
| 104 | 5.3.3.1 | Wykonaj test akceptacji użytkownika |  | 5.4d | 2024-07-22 | 2024-07-25 |  | 0d |  | Specjalista ds. Zapewnienia Jakości; Tester Oprogramowania | 24h | 2,240 |
| 105 | 5.3.4 | **Raporty** |  | 5.4d | 2024-07-22 | 2024-07-25 | 103SS | 0d |  | Specjalista ds. Zapewnienia Jakości; Tester Oprogramowania | 49h | 4,560 |
| 106 | 5.3.4.1 | Raportuj test akceptacji użytkownika |  | 5.4d | 2024-07-22 | 2024-07-25 |  | 0d |  | Specjalista ds. Zapewnienia Jakości; Tester Oprogramowania | 24h | 2,240 |
| 107 | 5.4 | Zakończenie integracji systemu | milestone | 0d | 2024-07-25 | 2024-07-25 | 98 | 0d |  |  |  |  |

| ID | WBS | Task | Type | Duration | Start | Finish | Predecessors | Total slack | Constraint | Resources | Work | Cost |
| --- | --- | --- | --- | --- | --- | --- | --- | --- | --- | --- | --- | --- |
| 110 | 6 | **Iteracja 6 - Wprowadzenie projektu** |  | 24.4d | 2024-07-25 | 2024-08-15 | 86 | 0d |  | Administrator Baz Danych; Kierownik Projektu; Programista; Tester Oprogramowania; Specjalista ds. Zapewnienia Jakości | 1336h | 129,060 |
| 111 | 6.1 | **Projektowanie** |  | 6d | 2024-07-25 | 2024-07-31 |  | 0d |  | Administrator Baz Danych; Kierownik Projektu; Programista; Tester Oprogramowania | 315h | 31,500 |
| 112 | 6.1.1 | **Informacja zwrotna** |  | 6d | 2024-07-25 | 2024-07-31 |  | 0d |  | Kierownik Projektu; Administrator Baz Danych; Programista; Tester Oprogramowania | 195h | 19,500 |
| 113 | 6.1.1.1 | Zdefiniowanie wymaganych modyfikacji |  | 3d | 2024-07-25 | 2024-07-29 |  | 0d |  | Administrator Baz Danych; Kierownik Projektu; Programista; Tester Oprogramowania | 60h | 6,000 |
| 114 | 6.1.1.2 | Akceptacja użytkownika |  | 3d | 2024-07-29 | 2024-07-31 | 113 | 0d |  | Kierownik Projektu | 15h | 1,500 |
| 115 | 6.2 | **Implementacja** |  | 10d | 2024-07-31 | 2024-08-08 | 111 | 0d |  | Administrator Baz Danych; Programista | 200h | 18,000 |
| 116 | 6.2.1 | Implementacja modyfikacji określonych przez użytkownika |  | 10d | 2024-07-31 | 2024-08-08 |  | 0d |  | Administrator Baz Danych; Programista | 100h | 9,000 |
| 117 | 6.3 | **Zapewnienie jakości** |  | 6.6d | 2024-08-08 | 2024-08-14 | 115 | 0d |  | Specjalista ds. Zapewnienia Jakości; Tester Oprogramowania; Administrator Baz Danych; Kierownik Projektu; Programista [200%] | 240h | 22,840 |
| 118 | 6.3.1 | Wykonaj test integracji |  | 3d | 2024-08-08 | 2024-08-12 |  | 0d |  | Specjalista ds. Zapewnienia Jakości; Tester Oprogramowania | 19h | 1,840 |
| 119 | 6.3.2 | Wykonaj test akceptacji użytkownika |  | 3d | 2024-08-12 | 2024-08-14 | 120SF, 118 | 0d |  | Specjalista ds. Zapewnienia Jakości; Tester Oprogramowania | 19h | 1,840 |
| 120 | 6.3.3 | Uzyskaj akceptację użytkownika |  | 1.8d | 2024-08-08 | 2024-08-09 |  | 4.8d | start no earlier than 2024-06-14 | Specjalista ds. Zapewnienia Jakości; Tester Oprogramowania | 15h | 1,560 |
| 121 | 6.4 | **Raporty** |  | 1.8d | 2024-08-14 | 2024-08-15 | 117 | 0d |  | Specjalista ds. Zapewnienia Jakości; Tester Oprogramowania | 28h | 2,880 |
| 122 | 6.4.1 | Uzyskaj akceptację użytkownika |  | 2d | 2024-08-14 | 2024-08-15 |  | 0d |  | Specjalista ds. Zapewnienia Jakości; Tester Oprogramowania | 14h | 1,440 |
| 123 | 6.5 | Wdrożenie projektu | milestone | 0d | 2024-08-15 | 2024-08-15 | 121 | 0d |  |  |  |  |
